# Construcción Carretera - Tramo Ejemplo (12 km)

Schedule from MS Project, 2026-07-06 to 2027-12-17, costs in $.
Obra vial - construcción de tramo carretero de 12 km
Constructora Vial Ejemplo S.A.

## Calendars

- Estándar: Mon-Fri 09:00-13:00, 15:00-19:00; Sat-Sun off.

## Resources

| Resource | Rate |
| --- | --- |
| Gerente de Proyecto | 75 |
| Ingeniero Residente | 56.25 |
| Topógrafo | 37.5 |
| Especialista Ambiental | 43.75 |
| Laboratorista (Control de Calidad) | 35 |
| Cuadrilla Movimiento de Tierras | 150 |
| Cuadrilla de Drenaje | 112.5 |
| Cuadrilla de Pavimento | 187.5 |
| Cuadrilla de Señalización | 87.5 |
| Maquinaria Pesada (excavadora/motoniveladora) | 250 |
| Material Granular (m3) | 25 |
| Mezcla Asfáltica (ton) | 95 |
| Concreto Estructural (m3) | 130 |

## Schedule

| ID | WBS | Task | Type | Duration | Start | Finish | Predecessors | Baseline start | Baseline finish | Baseline duration | Total slack | Resources | Work | Cost | Baseline cost |
| --- | --- | --- | --- | --- | --- | --- | --- | --- | --- | --- | --- | --- | --- | --- | --- |
| 1 | 1 | HITO: Inicio del Proyecto | milestone | 0d? | 2026-07-06 | 2026-07-06 |  | 2026-07-06 | 2026-07-06 | 0d? | 0d |  |  |  |  |
| 2 | 2 | **1. Ingeniería, Permisos y Movilización** |  | 60d? | 2026-07-06 | 2026-09-25 |  | 2026-07-06 | 2026-09-25 | 60d? | 0d |  | 1320h | 97,500 | 97,500 |
| 3 | 2.1 | Estudios topográficos y geotécnicos |  | 20d? | 2026-07-06 | 2026-07-31 | 1 | 2026-07-06 | 2026-07-31 | 20d? | 0d | Topógrafo; Ingeniero Residente | 320h | 15,000 | 15,000 |
| 4 | 2.2 | Diseño geométrico y estructural del pavimento |  | 25d? | 2026-08-03 | 2026-09-04 | 3 | 2026-08-03 | 2026-09-04 | 25d? | 0d | Ingeniero Residente | 200h | 11,250 | 11,250 |
| 5 | 2.3 | Tramitación de licencia ambiental y permisos |  | 30d? | 2026-08-03 | 2026-09-11 | 3 | 2026-08-03 | 2026-09-11 | 30d? | 10d | Especialista Ambiental | 240h | 10,500 | 10,500 |
| 6 | 2.4 | Adquisición de derecho de vía (predios) |  | 40d? | 2026-07-06 | 2026-08-28 | 1 | 2026-07-06 | 2026-08-28 | 40d? | 20d | Gerente de Proyecto | 320h | 24,000 | 24,000 |
| 7 | 2.5 | Movilización de equipos e instalación de campamento |  | 15d? | 2026-09-07 | 2026-09-25 | 4 | 2026-09-07 | 2026-09-25 | 15d? | 0d | Ingeniero Residente; Maquinaria Pesada (excavadora/motoniveladora) | 240h | 36,750 | 36,750 |
| 8 | 2.6 | HITO: Permisos aprobados e inicio físico de obra | milestone | 0d? | 2026-09-25 | 2026-09-25 | 5, 6, 7 | 2026-09-25 | 2026-09-25 | 0d? | 0d |  |  |  |  |
| 9 | 3 | **2. Obras Preliminares** |  | 30d? | 2026-09-28 | 2026-11-06 |  | 2026-09-28 | 2026-11-06 | 30d? | 0d |  | 480h | 79,000 | 79,000 |
| 10 | 3.1 | Replanteo topográfico del trazado |  | 10d? | 2026-09-28 | 2026-10-09 | 8 | 2026-09-28 | 2026-10-09 | 10d? | 0d | Topógrafo | 80h | 3,000 | 3,000 |
| 11 | 3.2 | Desmonte, descapote y limpieza |  | 20d? | 2026-10-12 | 2026-11-06 | 10 | 2026-10-12 | 2026-11-06 | 20d? | 0d | Cuadrilla Movimiento de Tierras; Maquinaria Pesada (excavadora/motoniveladora) | 320h | 64,000 | 64,000 |
| 12 | 3.3 | Demoliciones y remoción de obstáculos |  | 10d? | 2026-10-19 | 2026-10-30 | 11SS+5d | 2026-10-19 | 2026-10-30 | 10d? | 295d | Cuadrilla Movimiento de Tierras | 80h | 12,000 | 12,000 |
| 13 | 4 | **3. Movimiento de Tierras** |  | 80d? | 2026-11-09 | 2027-02-26 |  | 2026-11-09 | 2027-02-26 | 80d? | 0d |  | 1760h | 309,025 | 309,025 |
| 14 | 4.1 | Excavación en corte |  | 45d? | 2026-11-09 | 2027-01-08 | 11 | 2026-11-09 | 2027-01-08 | 45d? | 0d | Cuadrilla Movimiento de Tierras; Maquinaria Pesada (excavadora/motoniveladora) | 720h | 144,000 | 144,000 |
| 15 | 4.2 | Conformación de terraplenes (relleno) |  | 40d? | 2026-11-30 | 2027-01-22 | 14SS+15d | 2026-11-30 | 2027-01-22 | 40d? | 0d | Cuadrilla Movimiento de Tierras; Maquinaria Pesada (excavadora/motoniveladora); Material Granular (m3) | 640h | 128,025 | 128,025 |
| 16 | 4.3 | Conformación y compactación de subrasante |  | 25d? | 2027-01-25 | 2027-02-26 | 15 | 2027-01-25 | 2027-02-26 | 25d? | 0d | Cuadrilla Movimiento de Tierras; Laboratorista (Control de Calidad) | 400h | 37,000 | 37,000 |
| 17 | 5 | **4. Obras de Drenaje** |  | 75d? | 2027-03-01 | 2027-06-11 |  | 2027-03-01 | 2027-06-11 | 75d? | 0d |  | 1040h | 139,390 | 139,390 |
| 18 | 5.1 | Excavación para estructuras de drenaje |  | 20d? | 2027-03-01 | 2027-03-26 | 16 | 2027-03-01 | 2027-03-26 | 20d? | 0d | Cuadrilla de Drenaje; Maquinaria Pesada (excavadora/motoniveladora) | 320h | 58,000 | 58,000 |
| 19 | 5.2 | Construcción de alcantarillas |  | 30d? | 2027-03-29 | 2027-05-07 | 18 | 2027-03-29 | 2027-05-07 | 30d? | 0d | Cuadrilla de Drenaje; Concreto Estructural (m3) | 240h | 27,130 | 27,130 |
| 20 | 5.3 | Construcción de box culvert (paso de agua) |  | 35d? | 2027-03-15 | 2027-04-30 | 18SS+10d | 2027-03-15 | 2027-04-30 | 35d? | 165d | Cuadrilla de Drenaje; Concreto Estructural (m3) | 280h | 31,630 | 31,630 |
| 21 | 5.4 | Cunetas, bordillos y subdrenajes |  | 25d? | 2027-05-10 | 2027-06-11 | 19 | 2027-05-10 | 2027-06-11 | 25d? | 0d | Cuadrilla de Drenaje; Concreto Estructural (m3) | 200h | 22,630 | 22,630 |
| 22 | 6 | **5. Estructura de Pavimento** |  | 95d? | 2027-06-14 | 2027-10-22 |  | 2027-06-14 | 2027-10-22 | 95d? | 0d |  | 760h | 142,645 | 142,645 |
| 23 | 6.1 | Subbase granular |  | 30d? | 2027-06-14 | 2027-07-23 | 16, 21 | 2027-06-14 | 2027-07-23 | 30d? | 0d | Cuadrilla de Pavimento; Material Granular (m3) | 240h | 45,025 | 45,025 |
| 24 | 6.2 | Base granular |  | 30d? | 2027-07-26 | 2027-09-03 | 23 | 2027-07-26 | 2027-09-03 | 30d? | 0d | Cuadrilla de Pavimento; Material Granular (m3) | 240h | 45,025 | 45,025 |
| 25 | 6.3 | Imprimación asfáltica |  | 10d? | 2027-09-06 | 2027-09-17 | 24 | 2027-09-06 | 2027-09-17 | 10d? | 0d | Cuadrilla de Pavimento | 80h | 15,000 | 15,000 |
| 26 | 6.4 | Carpeta asfáltica en caliente |  | 25d? | 2027-09-20 | 2027-10-22 | 25 | 2027-09-20 | 2027-10-22 | 25d? | 0d | Cuadrilla de Pavimento; Mezcla Asfáltica (ton) | 200h | 37,595 | 37,595 |

| ID | WBS | Task | Type | Duration | Start | Finish | Predecessors | Baseline start | Baseline finish | Baseline duration | Total slack | Deadline | Resources | Work | Cost | Baseline cost |
| --- | --- | --- | --- | --- | --- | --- | --- | --- | --- | --- | --- | --- | --- | --- | --- | --- |
| 27 | 7 | **6. Obras Complementarias y Seguridad Vial** |  | 40d? | 2027-09-20 | 2027-11-12 |  | 2027-09-20 | 2027-11-12 | 40d? | 20d |  |  | 456h | 39,900 | 39,900 |
| 28 | 7.1 | Señalización horizontal (demarcación) |  | 12d? | 2027-10-25 | 2027-11-09 | 26 | 2027-10-25 | 2027-11-09 | 12d? | 3d |  | Cuadrilla de Señalización | 96h | 8,400 | 8,400 |
| 29 | 7.2 | Señalización vertical |  | 10d? | 2027-09-23 | 2027-10-06 | 26SS+3d | 2027-09-23 | 2027-10-06 | 10d? | 52d |  | Cuadrilla de Señalización | 80h | 7,000 | 7,000 |
| 30 | 7.3 | Defensas metálicas (barreras de contención) |  | 15d? | 2027-10-25 | 2027-11-12 | 26 | 2027-10-25 | 2027-11-12 | 15d? | 0d |  | Cuadrilla de Señalización | 120h | 10,500 | 10,500 |
| 31 | 7.4 | Iluminación vial |  | 20d? | 2027-09-20 | 2027-10-15 | 26SS | 2027-09-20 | 2027-10-15 | 20d? | 20d |  | Cuadrilla de Señalización | 160h | 14,000 | 14,000 |
| 32 | 8 | **7. Cierre y Entrega** |  | 25d? | 2027-11-15 | 2027-12-17 |  | 2027-11-15 | 2027-12-17 | 25d? | 0d |  |  | 280h | 22,300 | 22,300 |
| 33 | 8.1 | Limpieza final y paisajismo |  | 10d? | 2027-11-15 | 2027-11-26 | 28, 30, 31 | 2027-11-15 | 2027-11-26 | 10d? | 0d |  | Cuadrilla Movimiento de Tierras | 80h | 12,000 | 12,000 |
| 34 | 8.2 | Pruebas, ensayos y control de calidad final |  | 10d? | 2027-11-29 | 2027-12-10 | 33 | 2027-11-29 | 2027-12-10 | 10d? | 0d |  | Laboratorista (Control de Calidad); Ingeniero Residente | 160h | 7,300 | 7,300 |
| 35 | 8.3 | Liquidación y acta de recepción |  | 5d? | 2027-12-13 | 2027-12-17 | 34 | 2027-12-13 | 2027-12-17 | 5d? | 0d |  | Gerente de Proyecto | 40h | 3,000 | 3,000 |
| 36 | 8.4 | HITO: Entrega Final de la Obra | milestone | 0d? | 2027-12-17 | 2027-12-17 | 35 | 2027-12-17 | 2027-12-17 | 0d? | 0d | 2027-12-31 |  |  |  |  |
